# Children's book schedule

Schedule from MS Project, 2023-04-10 to 2023-11-09, costs in $.
Lucerne Publishing

## Calendars

- Standard: Mon-Fri 08:00-12:00, 13:00-17:00; Sat-Sun off.
- Mon-Wed Task Calendar: Mon-Wed 08:00-12:00, 13:00-17:00; Thu-Sun off.

## Resources

| Resource | Rate | Notes |
| --- | --- | --- |
| Carole Poland | 52.5 |  |
| Color Setting Services |  |  |
| Copyeditors | 45 |  |
| Dan Jump | 75.5 |  |
| Hany Morcos | 38.75 |  |
| Jane Dow | 55 |  |
| John Evans | 69.5 |  |
| Jun Cao | 42 |  |
| Katie Jordan | 48 |  |
| Luis Sousa | 70 |  |
| Printing Service |  |  |
| Robin Wood | 44 |  |
| Sharon Salavaria | 27.5 | Sharon's standard pay rate is adjusted for her half-time work schedule. |
| Tad Orman |  |  |
| Toby Nixon | 67.5 | Toby worked on launch campaigns for Toni Poe's previous two books. |
| Travel |  |  |
| Vikas Jain | 22 |  |
| William Flash |  |  |
| Zac Woodall | 55 |  |

## Schedule

| ID | WBS | Task | Type | Duration | Start | Finish | Predecessors | Total slack | Free slack | Constraint | Deadline | Resources | Work | Cost |
| --- | --- | --- | --- | --- | --- | --- | --- | --- | --- | --- | --- | --- | --- | --- |
| 1 | 1 | **Editorial Staff meeting** |  | 55.12d | 2023-04-17 08:00 | 2023-07-03 09:00 |  | 93.88d |  |  |  |  | 36h | 1,599 |
| 2 | 1.1 | Editorial Staff meeting 1 |  | 1h | 2023-04-17 08:00 | 2023-04-17 09:00 |  | 148.88d |  | start no earlier than 2023-04-17 08:00 |  | Carole Poland; Jun Cao; Hany Morcos | 3h | 133.25 |
| 3 | 1.2 | Editorial Staff meeting 2 |  | 1h | 2023-04-24 08:00 | 2023-04-24 09:00 |  | 143.88d |  | start no earlier than 2023-04-24 08:00 |  | Carole Poland; Jun Cao; Hany Morcos | 3h | 133.25 |
| 4 | 1.3 | Editorial Staff meeting 3 |  | 1h | 2023-05-01 08:00 | 2023-05-01 09:00 |  | 138.88d |  | start no earlier than 2023-05-01 08:00 |  | Carole Poland; Jun Cao; Hany Morcos | 3h | 133.25 |
| 5 | 1.4 | Editorial Staff meeting 4 |  | 1h | 2023-05-08 08:00 | 2023-05-08 09:00 |  | 133.88d |  | start no earlier than 2023-05-08 08:00 |  | Carole Poland; Jun Cao; Hany Morcos | 3h | 133.25 |
| 6 | 1.5 | Editorial Staff meeting 5 |  | 1h | 2023-05-15 08:00 | 2023-05-15 09:00 |  | 128.88d |  | start no earlier than 2023-05-15 08:00 |  | Carole Poland; Jun Cao; Hany Morcos | 3h | 133.25 |
| 7 | 1.6 | Editorial Staff meeting 6 |  | 1h | 2023-05-22 08:00 | 2023-05-22 09:00 |  | 123.88d |  | start no earlier than 2023-05-22 08:00 |  | Carole Poland; Jun Cao; Hany Morcos | 3h | 133.25 |
| 8 | 1.7 | Editorial Staff meeting 7 |  | 1h | 2023-05-29 08:00 | 2023-05-29 09:00 |  | 118.88d |  | start no earlier than 2023-05-29 08:00 |  | Carole Poland; Jun Cao; Hany Morcos | 3h | 133.25 |
| 9 | 1.8 | Editorial Staff meeting 8 |  | 1h | 2023-06-05 08:00 | 2023-06-05 09:00 |  | 113.88d |  | start no earlier than 2023-06-05 08:00 |  | Carole Poland; Jun Cao; Hany Morcos | 3h | 133.25 |
| 10 | 1.9 | Editorial Staff meeting 9 |  | 1h | 2023-06-12 08:00 | 2023-06-12 09:00 |  | 108.88d |  | start no earlier than 2023-06-12 08:00 |  | Carole Poland; Jun Cao; Hany Morcos | 3h | 133.25 |
| 11 | 1.10 | Editorial Staff meeting 10 |  | 1h | 2023-06-19 08:00 | 2023-06-19 09:00 |  | 103.88d |  | start no earlier than 2023-06-19 08:00 |  | Carole Poland; Jun Cao; Hany Morcos | 3h | 133.25 |
| 12 | 1.11 | Editorial Staff meeting 11 |  | 1h | 2023-06-26 08:00 | 2023-06-26 09:00 |  | 98.88d |  | start no earlier than 2023-06-26 08:00 |  | Carole Poland; Jun Cao; Hany Morcos | 3h | 133.25 |
| 13 | 1.12 | Editorial Staff meeting 12 |  | 1h | 2023-07-03 08:00 | 2023-07-03 09:00 |  | 93.88d |  | start no earlier than 2023-07-03 08:00 |  | Carole Poland; Jun Cao; Hany Morcos | 3h | 133.25 |
| 14 | 1 | **Acquisition** |  | 28d | 2023-04-10 08:00 | 2023-05-17 17:00 |  | -5.5d | 0d |  |  |  | 220h | 7,200 |
| 15 | 1.1 | Manuscript received | milestone | 0d | 2023-04-10 08:00 | 2023-04-10 08:00 |  | -5.5d | 0d |  |  |  |  |  |
| 16 | 1.2 | Content edit |  | 15d | 2023-04-10 08:00 | 2023-05-03 17:00 | 15 | -5.5d | 0d |  |  | Carole Poland | 120h | 6,300 |
| 17 | 1.3 | Author review of content edit |  | 10d | 2023-05-04 08:00 | 2023-05-17 17:00 | 16 | -5.5d | 0d |  |  | Tad Orman; Copyeditors [25%] | 100h | 900 |
| 18 | 1.4 | Handoff to Editorial | milestone | 0d | 2023-05-17 17:00 | 2023-05-17 17:00 | 17 | -5.5d | 0d |  | 2023-06-02 17:00 | Carole Poland |  |  |
| 19 | 2 | **Editorial** |  | 30d | 2023-05-18 08:00 | 2023-06-28 17:00 | 14 |  |  |  |  |  | 420h | 14,800 |
| 20 | 2.1 | Organize manuscript for copyedit |  | 5d | 2023-05-18 08:00 | 2023-05-24 17:00 |  | -5.5d | 0d |  |  | Hany Morcos | 40h | 1,550 |
| 21 | 2.2 | Copyedit |  | 20d | 2023-05-25 08:00 | 2023-06-21 17:00 | 20 | -5.5d | 0d |  |  | Copyeditors [150%] | 240h | 10,800 |
| 22 | 2.3 | Author review of copyedit |  | 10d | 2023-06-22 08:00 | 2023-07-05 17:00 | 21 | -5.5d | 0d |  |  | Tad Orman; Copyeditors [25%] | 100h | 900 |
| 23 | 2.4 | Copyedit incorp |  | 5d | 2023-07-03 13:00 | 2023-07-10 12:00 | 22FS-2.5% | -5.5d | 0d |  |  | Hany Morcos | 40h | 1,550 |
| 24 | 2.5 | Handoff to Production | milestone | 0d | 2023-07-10 12:00 | 2023-07-10 12:00 | 23 | -5.5d | 0d |  |  | Hany Morcos |  |  |

| ID | WBS | Task | Type | Duration | Start | Finish | Predecessors | Total slack | Free slack | Constraint | Calendar | Resources | Work | Cost |
| --- | --- | --- | --- | --- | --- | --- | --- | --- | --- | --- | --- | --- | --- | --- |
| 25 | 3 | **Design and Production** |  | 50d | 2023-06-29 08:00 | 2023-09-06 17:00 | 19 | 2d |  |  |  |  | 676h | 32,650 |
| 26 | 3.1 | Set pages |  | 15d | 2023-06-29 08:00 | 2023-07-19 17:00 |  | 2d | 0d |  |  | Jane Dow | 120h | 6,600 |
| 27 | 3.2 | Interior illustration design |  | 15d | 2023-06-29 08:00 | 2023-07-19 17:00 | 26SS | 2d | 0d |  |  | Luis Sousa | 120h | 8,400 |
| 28 | 3.3 | **1st Pages review** |  | 25d | 2023-07-20 08:00 | 2023-08-23 17:00 | 27 | 2d |  |  |  |  | 220h | 7,450 |
| 29 | 3.3.1 | Proofread and index |  | 10d | 2023-07-20 08:00 | 2023-08-02 17:00 |  | 2d | 0d | start no earlier than 2018-07-20 08:00 |  | Tad Orman; Copyeditors | 100h | 900 |
| 30 | 3.3.2 | Incorporate 1st Pages review |  | 5d | 2023-08-03 08:00 | 2023-08-09 17:00 | 29 | 2d | 0d |  |  | Hany Morcos | 40h | 1,550 |
| 31 | 3.3.3 | Send proofed pages to Production | milestone | 0d | 2023-08-09 17:00 | 2023-08-09 17:00 | 30 | 2d | 0d |  |  | Hany Morcos |  |  |
| 32 | 3.3.4 | Enter page corrections and index |  | 5d | 2023-08-10 08:00 | 2023-08-16 17:00 | 31 | 2d | 0d |  |  | Jane Dow | 40h | 2,200 |
| 33 | 3.3.5 | Cover design |  | 5d | 2023-08-17 08:00 | 2023-08-23 17:00 | 32 | 2d | 0d |  |  | Luis Sousa | 40h | 2,800 |
| 34 | 3.4 | **2nd Pages review** |  | 10d | 2023-08-24 08:00 | 2023-09-06 17:00 |  | 2d |  |  |  |  | 160h | 7,400 |
| 35 | 3.4.1 | Proof and review |  | 5d | 2023-08-24 08:00 | 2023-08-30 17:00 | 33 | 2d | 0d |  |  | Hany Morcos | 40h | 1,550 |
| 36 | 3.4.2 | Send proofed pages to Production | milestone | 0d | 2023-08-30 17:00 | 2023-08-30 17:00 | 35 | 2d | 0d |  |  | Hany Morcos |  |  |
| 37 | 3.4.3 | Final review |  | 5d | 2023-08-31 08:00 | 2023-09-06 17:00 | 36 | 2d |  |  |  | Jane Dow; Hany Morcos; Carole Poland | 120h | 5,850 |
| 38 | 3.5 | **Design book's companion website** |  | 5d | 2023-08-24 08:00 | 2023-08-30 17:00 |  | 7d |  |  |  |  | 56h | 2,800 |
| 39 | 3.5.1 | Create mockup |  | 3d | 2023-08-24 08:00 | 2023-08-28 17:00 | 33 | 7d | 0d |  |  | Luis Sousa | 24h | 1,680 |
| 40 | 3.5.2 | Review with author |  | 2d | 2023-08-29 08:00 | 2023-08-30 17:00 | 39 | 7d |  |  |  | Luis Sousa; Tad Orman | 32h | 1,120 |
| 41 | 4 | **Color prep and printing** |  | 44d | 2023-09-11 08:00 | 2023-11-09 17:00 |  | 0d |  |  |  |  | 328h | 810 |
| 42 | 4.1 | Send to color house |  | 1d | 2023-09-11 08:00 | 2023-09-11 17:00 | 37, 40 | 0d |  |  | Mon-Wed Task Calendar | Hany Morcos | 8h | 310 |
| 43 | 4.2 | Generate proofs |  | 10d | 2023-09-12 08:00 | 2023-09-25 17:00 | 42 | 0d |  |  |  | Color Setting Services | 80h | 500 |
| 44 | 4.3 | Print and ship |  | 30d | 2023-09-29 08:00 | 2023-11-09 17:00 | 43FS+3d | 0d |  |  |  | Printing Service | 240h |  |
