# Children's book schedule

Schedule from MS Project, 2023-04-10 to 2023-11-09, costs in $.
Lucerne Publishing

## Calendars

- Standard: Mon-Fri 08:00-12:00, 13:00-17:00; Sat-Sun off.
- Mon-Wed Calendar: Mon-Wed 08:00-12:00, 13:00-17:00; Thu-Sun off.

## Resources

| Resource | Rate | Notes |
| --- | --- | --- |
| Carole Poland | 52.5 |  |
| Color Setting Services |  |  |
| Copyeditors | 45 |  |
| Dan Jump | 75.5 |  |
| Hany Morcos | 38.75 |  |
| Jane Dow | 55 |  |
| John Evans | 69.5 |  |
| Jun Cao | 42 |  |
| Katie Jordan | 48 |  |
| Luis Sousa | 70 |  |
| Printing Service |  |  |
| Robin Wood | 44 |  |
| Sharon Salavaria | 27.5 | Sharon's standard pay rate is adjusted for her half-time work schedule. |
| Tad Orman |  |  |
| Toby Nixon | 67.5 | Toby worked on launch campaigns for Toni Poe's previous two books. |
| Travel |  |  |
| Vikas Jain | 22 |  |
| William Flash |  |  |
| Zac Woodall | 55 |  |

## Schedule

| ID | WBS | Task | Type | Duration | Start | Finish | Predecessors | Total slack | Free slack | Constraint | Resources | Work | Cost |
| --- | --- | --- | --- | --- | --- | --- | --- | --- | --- | --- | --- | --- | --- |
| 1 | 1 | **Acquisition** |  | 29d | 2023-04-10 | 2023-05-18 |  | 0.5d | 0d |  |  | 220h | 7,200 |
| 2 | 1.1 | Manuscript received | milestone | 0d | 2023-04-10 | 2023-04-10 |  | 0.5d | 0d |  |  |  |  |
| 3 | 1.2 | Content edit |  | 15d | 2023-04-10 | 2023-05-04 | 2 | 0.5d | 0d |  | Carole Poland | 120h | 6,300 |
| 4 | 1.3 | Author review of content edit |  | 10d | 2023-05-05 | 2023-05-18 | 3 | 0.5d | 0d |  | Tad Orman; Copyeditors [25%] | 100h | 900 |
| 5 | 1.4 | Handoff to Editorial | milestone | 0d | 2023-05-18 | 2023-05-18 | 4 | 0.5d |  |  | Carole Poland |  |  |
| 6 | 2 | **Editorial** |  | 32.5d | 2023-05-19 | 2023-07-04 | 1 | 0.5d | 0d |  |  | 420h | 14,800 |
| 7 | 2.1 | Organize manuscript for copyedit |  | 5d | 2023-05-19 | 2023-05-25 |  | 0.5d | 0d |  | Hany Morcos | 40h | 1,550 |
| 8 | 2.2 | Copyedit |  | 15d | 2023-05-26 | 2023-06-15 | 7 | 0.5d | 0d |  | Copyeditors [200%] | 240h | 10,800 |
| 9 | 2.3 | Author review of copyedit |  | 10d | 2023-06-16 | 2023-06-29 | 8 | 0.5d | 0d |  | Tad Orman; Copyeditors [25%] | 100h | 900 |
| 10 | 2.4 | Copyedit incorp |  | 5d | 2023-06-27 | 2023-07-04 | 9FS-2.5% | 0.5d | 0d |  | Hany Morcos | 40h | 1,550 |
| 11 | 2.5 | Handoff to Production | milestone | 0d | 2023-07-04 | 2023-07-04 | 10 | 0.5d |  |  | Hany Morcos |  |  |
| 12 | 3 | **Design and Production** |  | 48d | 2023-07-04 | 2023-09-08 | 6 | 0.5d |  |  |  | 668h | 32,340 |
| 13 | 3.1 | Set pages |  | 15d | 2023-07-04 | 2023-07-25 |  | 0.5d | 0d |  | Jane Dow | 120h | 6,600 |
| 14 | 3.2 | Interior illustration design |  | 15d | 2023-07-04 | 2023-07-25 | 13SS | 0.5d | 0d |  | Luis Sousa | 120h | 8,400 |
| 15 | 3.3 | **1st Pages review** |  | 25d | 2023-07-25 | 2023-08-29 | 14 | 0.5d |  |  |  | 220h | 7,450 |
| 16 | 3.3.1 | Proofread and index |  | 10d | 2023-07-25 | 2023-08-08 |  | 0.5d | 0d | start no earlier than 2023-07-20 | Tad Orman; Copyeditors | 100h | 900 |
| 17 | 3.3.2 | Incorporate 1st Pages review |  | 5d | 2023-08-08 | 2023-08-15 | 16 | 0.5d | 0d |  | Hany Morcos | 40h | 1,550 |
| 18 | 3.3.3 | Send proofed pages to Production | milestone | 0d | 2023-08-15 | 2023-08-15 | 17 | 0.5d | 0d |  | Hany Morcos |  |  |
| 19 | 3.3.4 | Enter page corrections and index |  | 5d | 2023-08-15 | 2023-08-22 | 18 | 0.5d | 0d |  | Jane Dow | 40h | 2,200 |
| 20 | 3.3.5 | Cover design |  | 5d | 2023-08-22 | 2023-08-29 | 19 | 0.5d | 0d |  | Luis Sousa | 40h | 2,800 |
| 21 | 3.4 | **2nd Pages review** |  | 8d | 2023-08-29 | 2023-09-08 |  | 0.5d |  |  |  | 152h | 7,090 |
| 22 | 3.4.1 | Proof and review |  | 4d | 2023-08-29 | 2023-09-04 | 20 | 0.5d | 0d |  | Hany Morcos | 32h | 1,240 |
| 23 | 3.4.2 | Send proofed pages to Production | milestone | 0d | 2023-09-04 | 2023-09-04 | 22 | 0.5d | 0d |  | Hany Morcos |  |  |
| 24 | 3.4.3 | Final review |  | 4d | 2023-09-04 | 2023-09-08 | 23 | 0.5d |  |  | Jane Dow; Hany Morcos; Carole Poland | 120h | 5,850 |

| ID | WBS | Task | Duration | Start | Finish | Predecessors | Total slack | Free slack | Calendar | Resources | Work | Cost |
| --- | --- | --- | --- | --- | --- | --- | --- | --- | --- | --- | --- | --- |
| 25 | 3.5 | **Design book's companion website** | 5d | 2023-08-29 | 2023-09-05 |  | 3.5d |  |  |  | 56h | 2,800 |
| 26 | 3.5.1 | Create mockup | 3d | 2023-08-29 | 2023-09-01 | 20 | 3.5d | 0d |  | Luis Sousa | 24h | 1,680 |
| 27 | 3.5.2 | Review with author | 2d | 2023-09-01 | 2023-09-05 | 26 | 3.5d |  |  | Luis Sousa; Tad Orman | 32h | 1,120 |
| 28 | 4 | **Color prep and printing** | 44d | 2023-09-11 | 2023-11-09 |  | 0d |  |  |  | 328h | 310 |
| 29 | 4.1 | Send to color house | 1d | 2023-09-11 | 2023-09-11 | 24, 27 | 0d |  | Mon-Wed Calendar | Hany Morcos | 8h | 310 |
| 30 | 4.2 | Generate proofs | 10d | 2023-09-12 | 2023-09-25 | 29 | 0d |  |  | Color Setting Services | 80h |  |
| 31 | 4.3 | Print and ship | 30d | 2023-09-29 | 2023-11-09 | 30FS+3d | 0d |  |  | Printing Service | 240h |  |
