# New book launch

Schedule from MS Project, 2023-01-09 to 2023-03-03, status date 2023-01-18, costs in $, A marks actual dates.
New book launch schedule
Lucerne Publishing
New children's book for spring release

## Calendars

- Standard: Mon-Fri 08:00-12:00, 13:00-17:00; Sat-Sun off. Exceptions (off unless hours are given): 2023-01-25 (Staff at morale event).

## Resources

| Resource | Rate | Notes |
| --- | --- | --- |
| Jun Cao | 42 |  |
| Sharon Salavaria | 27.5 | Sharons standard pay rate is adjusted for her half-time work schedule. |
| Toby Nixon | 67.5 | Toby worked on launch campaigns for Toni Poes previous two books. |
| Toni Poe |  |  |
| Zac Woodall | 55 |  |
| Copyeditors | 45 |  |
| Travel |  |  |
| Carole Poland | 52.5 |  |
| Dan Jump | 75.5 |  |
| Hany Morcos | 38.75 |  |
| Jane Dow | 55 |  |
| John Evans | 69.5 |  |
| Katie Jordan | 48 |  |
| Luis Sousa | 70 |  |
| Printing Service |  |  |
| Robin Wood | 44 |  |
| Vikas Jain | 22 |  |
| William Flash |  |  |

## Schedule

| ID | WBS | Task | Type | Duration | Start | Finish | Predecessors | Complete | Remaining | Baseline start | Baseline finish | Baseline duration | Total slack | Free slack | Resources | Work | Actual work | Cost | Baseline cost | Actual cost |
| --- | --- | --- | --- | --- | --- | --- | --- | --- | --- | --- | --- | --- | --- | --- | --- | --- | --- | --- | --- | --- |
| 1 | 1 | **Planning Phase** |  | 11d | 2023-01-09 A | 2023-01-23 A |  | 100% |  | 2023-01-09 | 2023-01-23 | 11d |  |  |  | 248h | 248h | 11,900 | 11,900 | 11,900 |
| 2 | 1.1 | Assign launch team members |  | 1d | 2023-01-09 A | 2023-01-09 A |  | 100% |  | 2023-01-09 | 2023-01-09 | 1d |  |  | Carole Poland | 8h | 8h | 420 | 420 | 420 |
| 3 | 1.2 | Complete author questionnaire |  | 1w | 2023-01-10 A | 2023-01-16 A | 2 | 100% |  | 2023-01-10 | 2023-01-16 | 1w |  |  | Toni Poe | 40h | 40h |  |  |  |
| 4 | 1.3 | Schedule author interviews |  | 1w | 2023-01-09 A | 2023-01-16 A | 2 | 100% |  | 2023-01-09 | 2023-01-16 | 1w |  |  | Jun Cao | 40h | 40h | 1,680 | 1,680 | 1,680 |
| 5 | 1.4 | Design and order marketing material |  | 2w | 2023-01-10 A | 2023-01-23 A | 2 | 100% |  | 2023-01-10 | 2023-01-23 | 2w |  |  | Toby Nixon; Zac Woodall | 160h | 160h | 9,800 | 9,800 | 9,800 |
| 6 | 1.5 | Planning complete! | milestone | 0d | 2023-01-23 A | 2023-01-23 A | 5 | 100% |  | 2023-01-23 | 2023-01-23 | 0d |  |  |  |  |  |  |  |  |
| 7 | 2 | **Internal Launch Phase** |  | 16d | 2023-01-24 A | 2023-02-15 | 1 | 50% | 8d | 2023-01-24 | 2023-02-10 | 13d | 0d |  |  | 348h | 140h | 17,052 | 13,942 | 7,240 |
| 8 | 2.1 | Kickoff book launch meeting |  | 1d | 2023-01-24 A | 2023-01-24 A |  | 100% |  | 2023-01-24 | 2023-01-24 | 1d |  |  | Sharon Salavaria [50%]; Toby Nixon | 12h | 12h | 650 | 650 | 650 |
| 9 | 2.2 | Prepare book P&L statement |  | 3d | 2023-01-26 A | 2023-01-30 A | 8 | 100% |  | 2023-01-26 | 2023-01-27 | 2d |  |  | Carole Poland | 24h | 24h | 1,260 | 840 | 1,260 |
| 10 | 2.2 | Plan author's travel itinerary |  | 7d | 2023-01-27 A | 2023-02-06 A | 8 | 100% |  | 2023-01-26 | 2023-02-02 | 6d |  |  | Jane Dow | 56h | 56h | 3,080 | 2,640 | 3,080 |
| 11 | 2.3 | Channel Sales prep |  | 8d | 2023-01-26 A | 2023-02-06 | 8 | 38% | 5d | 2023-01-26 | 2023-02-01 | 5d | 0d |  | Zac Woodall; Hany Morcos | 128h | 48h | 6,000 | 3,750 | 2,250 |
| 12 | 2.4 | Complete book launch form |  | 2d | 2023-02-07 | 2023-02-08 | 11 |  |  | 2023-02-02 | 2023-02-03 | 2d | 5d |  | Toby Nixon; Vikas Jain | 32h |  | 1,432 | 1,432 |  |
| 13 | 2.5 | Prepare book sales kit |  | 1w | 2023-02-07 | 2023-02-13 | 8, 11 |  |  | 2023-02-02 | 2023-02-08 | 1w | 0d |  | Hany Morcos; Zac Woodall | 80h |  | 3,750 | 3,750 |  |
| 14 | 2.6 | Distribute internal marketing material |  | 2d | 2023-02-14 | 2023-02-15 | 13 |  |  | 2023-02-09 | 2023-02-10 | 2d | 0d |  | Zac Woodall | 16h |  | 880 | 880 |  |
| 15 | 3 | **Public Launch Phase** |  | 12d | 2023-02-16 | 2023-03-03 | 7 |  |  | 2023-02-13 | 2023-02-28 | 12d | 0d |  |  | 280h |  | 13,352 | 13,352 |  |
| 16 | 3.1 | **Author travel and appearances** |  | 2d | 2023-02-16 | 2023-02-17 |  |  |  | 2023-02-13 | 2023-02-14 | 2d | 10d |  |  | 16h |  | 800 | 800 |  |
| 17 | 3.1.1 | Author radio interview |  | 1d | 2023-02-16 | 2023-02-16 |  |  |  | 2023-02-13 | 2023-02-13 | 1d | 10d | 0d | Toni Poe | 8h |  |  |  |  |
| 18 | 3.1.2 | Author reading and signing at book fair |  | 1d | 2023-02-17 | 2023-02-17 | 17 |  |  | 2023-02-14 | 2023-02-14 | 1d | 10d |  | Toni Poe; Travel [0.1%] | 8h |  | 800 | 800 |  |
| 19 | 3.2 | Distribute advance copies |  | 2d | 2023-02-16 | 2023-02-17 |  |  |  | 2023-02-13 | 2023-02-14 | 2d | 10d |  | Vikas Jain; Toby Nixon | 32h |  | 1,432 | 1,432 |  |
| 20 | 3.3 | Distribute book sales kit |  | 2d | 2023-02-16 | 2023-02-17 |  |  |  | 2023-02-13 | 2023-02-14 | 2d | 0d |  | Zac Woodall | 16h |  | 880 | 880 |  |
| 21 | 3.4 | Coordinate magazine feature articles |  | 7d | 2023-02-20 | 2023-02-28 | 20 |  |  | 2023-02-15 | 2023-02-23 | 7d | 3d |  | Zac Woodall | 56h |  | 3,080 | 3,080 |  |
| 22 | 3.5 | Launch public web portal for book |  | 1w | 2023-02-20 | 2023-02-24 | 20 |  |  | 2023-02-15 | 2023-02-21 | 1w | 0d |  | Toby Nixon; Vikas Jain | 80h |  | 3,580 | 3,580 |  |
| 23 | 3.6 | Launch social media programs for book |  | 1w | 2023-02-27 | 2023-03-03 | 22 |  |  | 2023-02-22 | 2023-02-28 | 1w | 0d |  | Toby Nixon; Vikas Jain | 80h |  | 3,580 | 3,580 |  |
| 24 | 3.7 | Launch complete! | milestone | 0d | 2023-03-03 | 2023-03-03 | 21, 22, 23 |  |  | 2023-02-28 | 2023-02-28 | 0d | 0d |  |  |  |  |  |  |  |

Notes:
- 19: Get recipient list from publicist
